# PW1 Group 32 ElectroMyo Gang

Schedule from MS Project XML, 2026-11-02 to 2026-11-05, 12 hours a day, A marks actual dates.

## Calendars

- Standard: Mon-Fri 08:00-20:00; Sat-Sun off.

## Resources

| Resource |
| --- |
| tc2375 |
| ehw37 |
| db2486 |
| saa335 |
| drm74 |
| nr842 |

## Schedule

| ID | WBS | Task | Type | Duration | Start | Finish | Predecessors | Complete | Constraint | Resources |
| --- | --- | --- | --- | --- | --- | --- | --- | --- | --- | --- |
| 1 | 1 | **WP1 Time management** |  | 33h | 2026-11-02 13:00 | 2026-11-05 10:00 |  |  |  |  |
| 2 | 1.1 | Draft the Gantt chart in ProjectLibre (V1) |  | 2h | 2026-11-02 13:00 A | 2026-11-02 15:00 A | 10 | 100% | start no earlier than 2026-11-02 13:00 | tc2375 |
| 3 | 1.2 | Identify the critical path and allocate tasks |  | 0.5h | 2026-11-02 15:00 A | 2026-11-02 15:30 A | 2 | 100% | start no earlier than 2026-11-02 15:00 | tc2375 |
| 4 | 1.3 | Buffer: planning |  | 0.5h | 2026-11-02 15:30 A | 2026-11-02 16:00 A | 3 | 100% | start no earlier than 2026-11-02 15:30 |  |
| 5 | 1.4 | Update the Gantt chart to actual progress (V2) |  | 1h | 2026-11-04 18:30 | 2026-11-04 19:30 | 4, 40 | 50% | start no earlier than 2026-11-04 18:30 | tc2375 |
| 6 | 1.5 | Make PERT time estimates for the main activities |  | 0.5h | 2026-11-04 19:30 | 2026-11-04 20:00 | 5 |  | start no earlier than 2026-11-04 19:30 | tc2375 |
| 7 | 1.6 | Finalise the Gantt and PERT charts, save to QMS |  | 0.5h | 2026-11-05 09:00 | 2026-11-05 09:30 | 6 |  | start no earlier than 2026-11-05 09:00 | tc2375 |
| 8 | 1.7 | Write up the project time-related risks |  | 0.5h | 2026-11-05 09:30 | 2026-11-05 10:00 | 7 |  | start no earlier than 2026-11-05 09:30 | tc2375 |
| 9 | 2 | **WP2 Team leadership** |  | 38h | 2026-11-02 11:00 | 2026-11-05 13:00 |  |  |  |  |
| 10 | 2.1 | Kick-off meeting: team charter, goals and roles |  | 1.5h | 2026-11-02 11:00 A | 2026-11-02 12:30 A |  | 100% | start no earlier than 2026-11-02 11:00 | tc2375; ehw37; db2486; saa335; drm74; nr842 |
| 11 | 2.2 | Write up the team process (charter document) |  | 2h | 2026-11-02 13:00 A | 2026-11-02 15:00 A | 10 | 100% | start no earlier than 2026-11-02 13:00 | saa335 |
| 12 | 2.3 | Complete the skills matrix and allocate tasks |  | 0.5h | 2026-11-03 11:00 A | 2026-11-03 11:30 A | 10 | 100% | start no earlier than 2026-11-03 11:00 | tc2375; ehw37; db2486; saa335; drm74; nr842 |
| 13 | 2.4 | Team charter and skills matrix agreed | milestone | 0h | 2026-11-03 11:30 A | 2026-11-03 11:30 A | 12 | 100% | start no earlier than 2026-11-03 11:30 |  |
| 14 | 2.5 | Team meeting (Tuesday) |  | 2h | 2026-11-03 11:00 A | 2026-11-03 13:00 A |  | 100% | start no earlier than 2026-11-03 11:00 | tc2375; ehw37; db2486; saa335; drm74; nr842 |
| 15 | 2.6 | Team meeting (Wednesday) |  | 2h | 2026-11-04 11:00 A | 2026-11-04 13:00 A |  | 100% | start no earlier than 2026-11-04 11:00 | tc2375; ehw37; db2486; saa335; drm74; nr842 |
| 16 | 2.7 | Team meeting (Thursday): sign off the slides |  | 2h | 2026-11-05 11:00 | 2026-11-05 13:00 |  |  | start no earlier than 2026-11-05 11:00 | tc2375; ehw37; db2486; saa335; drm74; nr842 |
| 17 | 2.8 | Add proficiency scores to the skills matrix |  | 0.5h | 2026-11-05 11:00 | 2026-11-05 11:30 | 12 |  | start no earlier than 2026-11-05 11:00 | tc2375; ehw37; db2486; saa335; drm74; nr842 |
| 18 | 3 | **WP3 Quality management** |  | 39.5h | 2026-11-02 13:00 | 2026-11-05 16:30 |  |  |  |  |
| 19 | 3.1 | Set up the QMS folder tree on OneDrive |  | 1h | 2026-11-02 13:00 A | 2026-11-02 14:00 A | 10 | 100% | start no earlier than 2026-11-02 13:00 | ehw37 |
| 20 | 3.2 | Write the naming procedure and the file list |  | 1h | 2026-11-03 11:00 A | 2026-11-03 12:00 A | 19 | 100% | start no earlier than 2026-11-03 11:00 | ehw37 |
| 21 | 3.3 | Fill in the D&D matrix up to verification |  | 16h | 2026-11-03 14:00 | 2026-11-04 18:00 | 20 | 80% | start no earlier than 2026-11-03 14:00 | db2486 |
| 22 | 3.4 | Finish the remaining D&D rows (N4, N6, N7) |  | 0.5h | 2026-11-05 09:00 | 2026-11-05 09:30 | 21 |  | start no earlier than 2026-11-05 09:00 | db2486 |
| 23 | 3.5 | Buffer: audit check |  | 1h | 2026-11-05 09:30 | 2026-11-05 10:30 | 22, 7 |  | start no earlier than 2026-11-05 09:30 |  |
| 24 | 3.6 | QMS audit (group 32) |  | 0.25h | 2026-11-05 10:30 | 2026-11-05 10:45 | 23 |  | must start on 2026-11-05 10:30 | tc2375; ehw37; db2486; saa335; drm74; nr842 |
| 25 | 3.7 | Update the QMS file list (videos and new versions) |  | 0.25h | 2026-11-05 16:15 | 2026-11-05 16:30 | 24, 54 |  | start no earlier than 2026-11-05 16:15 | ehw37 |

| ID | WBS | Task | Type | Duration | Start | Finish | Predecessors | Complete | Constraint | Resources |
| --- | --- | --- | --- | --- | --- | --- | --- | --- | --- | --- |
| 26 | 4 | **WP4 EMG recording** |  | 13.5h | 2026-11-02 13:00 | 2026-11-03 14:30 |  |  |  |  |
| 27 | 4.1 | Research electrode placement on the forearm |  | 1h | 2026-11-02 13:00 A | 2026-11-02 14:00 A | 10 | 100% | start no earlier than 2026-11-02 13:00 | drm74 |
| 28 | 4.2 | Write the risk assessment and book the shared kit |  | 1h | 2026-11-02 13:00 A | 2026-11-02 14:00 A | 10 | 100% | start no earlier than 2026-11-02 13:00 | nr842 |
| 29 | 4.3 | Write the Arduino sampling code (2 kHz) |  | 2h | 2026-11-03 09:00 A | 2026-11-03 11:00 A | 27 | 100% | start no earlier than 2026-11-03 09:00 | drm74 |
| 30 | 4.4 | Collect the shared EMG kit | milestone | 0h | 2026-11-03 12:05 A | 2026-11-03 12:05 A | 28 | 100% | must start on 2026-11-03 12:05 |  |
| 31 | 4.5 | Set up the kit and do pre-recording checks |  | 0.92h | 2026-11-03 12:05 A | 2026-11-03 13:00 A | 30, 29 | 100% | start no earlier than 2026-11-03 12:05 | ehw37; drm74; db2486; saa335 |
| 32 | 4.6 | Record the 9 hand and wrist movements |  | 1h | 2026-11-03 13:00 A | 2026-11-03 14:00 A | 31 | 100% | start no earlier than 2026-11-03 13:00 | drm74; tc2375; ehw37 |
| 33 | 4.7 | EMG measurements complete (Goal 1) | milestone | 0h | 2026-11-03 14:00 A | 2026-11-03 14:00 A | 32 | 100% | start no earlier than 2026-11-03 14:00 |  |
| 34 | 4.8 | Hand the kit over to the partner team |  | 0.5h | 2026-11-03 14:00 A | 2026-11-03 14:30 A | 32 | 100% | start no earlier than 2026-11-03 14:00 | nr842 |
| 35 | 5 | **WP5 Signal processing** |  | 27h | 2026-11-02 13:00 | 2026-11-04 16:00 |  |  |  |  |
| 36 | 5.1 | Write the MATLAB import and plotting script |  | 4h | 2026-11-02 13:00 A | 2026-11-02 17:00 A | 10 | 100% | start no earlier than 2026-11-02 13:00 | db2486 |
| 37 | 5.2 | Filter the noise out of the signals (Goal 2) |  | 3h | 2026-11-03 14:00 A | 2026-11-03 17:00 A | 33, 36 | 100% | start no earlier than 2026-11-03 14:00 | drm74; db2486 |
| 38 | 5.3 | Verify the recorded data |  | 1h | 2026-11-03 17:00 A | 2026-11-03 18:00 A | 37 | 100% | start no earlier than 2026-11-03 17:00 | drm74; tc2375; nr842 |
| 39 | 5.4 | Condition the signals (Goal 3) |  | 2h | 2026-11-04 09:00 A | 2026-11-04 11:00 A | 37 | 100% | start no earlier than 2026-11-04 09:00 | drm74; db2486 |
| 40 | 5.5 | Map the signals to the movements (Goal 3) |  | 3h | 2026-11-04 13:00 A | 2026-11-04 16:00 A | 39 | 100% | start no earlier than 2026-11-04 13:00 | db2486 |
| 41 | 5.6 | Signal analysis complete (Goal 3) | milestone | 0h | 2026-11-04 16:00 A | 2026-11-04 16:00 A | 40, 38 | 100% | start no earlier than 2026-11-04 16:00 |  |
| 42 | 6 | **WP6 NinaPro comparison** |  | 26h | 2026-11-02 14:00 | 2026-11-04 16:00 |  |  |  |  |
| 43 | 6.1 | Prepare the NinaPro dataset for comparison |  | 3h | 2026-11-02 14:00 A | 2026-11-02 17:00 A | 28 | 100% | start no earlier than 2026-11-02 14:00 | nr842 |
| 44 | 6.2 | Compare our signals with NinaPro (Goal 4) |  | 3h | 2026-11-04 13:00 | 2026-11-04 16:00 | 39, 43 | 75% | start no earlier than 2026-11-04 13:00 | drm74; nr842 |
| 45 | 7 | **WP7 Presentation and videos** |  | 40.5h | 2026-11-02 12:30 | 2026-11-05 17:00 |  |  |  |  |
| 46 | 7.1 | Draft the project management document |  | 16h | 2026-11-02 12:30 A | 2026-11-03 16:30 A | 10 | 100% | start no earlier than 2026-11-02 12:30 | saa335 |
| 47 | 7.2 | Draft the presentation slides |  | 1.5h | 2026-11-02 17:30 A | 2026-11-02 19:00 A | 36 | 100% | start no earlier than 2026-11-02 17:30 | drm74 |
| 48 | 7.3 | Add the analysis results to the slides |  | 1.25h | 2026-11-04 16:00 A | 2026-11-04 17:15 A | 41, 44, 47 | 100% | start no earlier than 2026-11-04 16:00 | drm74; db2486 |
| 49 | 7.4 | Complete the project management document |  | 2h | 2026-11-05 09:00 | 2026-11-05 11:00 | 46 |  | start no earlier than 2026-11-05 09:00 | saa335; nr842 |
| 50 | 7.5 | Finalise the slides (maximum 5) |  | 1h | 2026-11-05 09:00 | 2026-11-05 10:00 | 48 |  | start no earlier than 2026-11-05 09:00 | drm74 |
| 51 | 7.6 | Record the individual videos (maximum 3 min) |  | 1h | 2026-11-05 13:45 | 2026-11-05 14:45 | 50, 16, 60 |  | start no earlier than 2026-11-05 13:45 | tc2375; ehw37; db2486; saa335; drm74; nr842 |
| 52 | 7.7 | Check the video lengths and content |  | 0.5h | 2026-11-05 14:45 | 2026-11-05 15:15 | 51 |  | start no earlier than 2026-11-05 14:45 | tc2375; ehw37; db2486; saa335; drm74; nr842 |
| 53 | 7.8 | Buffer: video re-takes |  | 0.5h | 2026-11-05 15:15 | 2026-11-05 15:45 | 52 |  | start no earlier than 2026-11-05 15:15 |  |
| 54 | 7.9 | Upload the videos to Moodle |  | 0.5h | 2026-11-05 15:45 | 2026-11-05 16:15 | 53 |  | start no earlier than 2026-11-05 15:45 | tc2375; ehw37; db2486; saa335; drm74; nr842 |
| 55 | 7.10 | Final review of all evidence |  | 0.25h | 2026-11-05 16:30 | 2026-11-05 16:45 | 25, 17, 49 |  | start no earlier than 2026-11-05 16:30 | tc2375; ehw37; db2486; saa335; drm74; nr842 |
| 56 | 7.11 | Project buffer |  | 0.25h | 2026-11-05 16:45 | 2026-11-05 17:00 | 55 |  | start no earlier than 2026-11-05 16:45 |  |

| ID | WBS | Task | Duration | Start | Finish | Predecessors | Complete | Constraint | Resources |
| --- | --- | --- | --- | --- | --- | --- | --- | --- | --- |
| 57 | 8 | **WP8 Sustainability** | 14.25h | 2026-11-04 11:30 | 2026-11-05 13:45 |  |  |  |  |
| 58 | 8.1 | Sustainability ideas: 4Rs, life cycle and value | 1h | 2026-11-04 11:30 A | 2026-11-04 12:30 A | 10 | 100% | start no earlier than 2026-11-04 11:30 | db2486 |
| 59 | 8.2 | Find CO2 values for each life-cycle stage | 1h | 2026-11-05 10:00 | 2026-11-05 11:00 | 58, 22 |  | start no earlier than 2026-11-05 10:00 | db2486 |
| 60 | 8.3 | Write the individual sustainability answers | 0.75h | 2026-11-05 13:00 | 2026-11-05 13:45 | 59, 16 |  | start no earlier than 2026-11-05 13:00 | tc2375; ehw37; db2486; saa335; drm74; nr842 |
