# PW1 Group 32 ElectroMyo Gang

Schedule from MS Project XML, 2026-11-02 to 2026-11-05, 12 hours a day, A marks actual dates.

## Calendars

- Standard: Mon-Fri 08:00-20:00; Sat-Sun off.

## Resources

| Resource |
| --- |
| tc2375 |
| ehw37 |
| db2486 |
| saa335 |
| drm74 |
| nr842 |

## Schedule

| ID | WBS | Task | Type | Duration | Start | Finish | Predecessors | Complete | Constraint |
| --- | --- | --- | --- | --- | --- | --- | --- | --- | --- |
| 1 | 1 | **WP1 Time management** |  | 33h | 2026-11-02 13:00 | 2026-11-05 10:00 |  |  |  |
| 2 | 1.1 | Draft Gantt chart (V1) |  | 2h | 2026-11-02 13:00 A | 2026-11-02 15:00 A | 11 | 100% | start no earlier than 2026-11-02 13:00 |
| 3 | 1.2 | Find critical path, allocate tasks |  | 0.5h | 2026-11-02 15:00 A | 2026-11-02 15:30 A | 2 | 100% | start no earlier than 2026-11-02 15:00 |
| 4 | 1.3 | Buffer: planning |  | 0.5h | 2026-11-02 15:30 A | 2026-11-02 16:00 A | 3 | 100% | start no earlier than 2026-11-02 15:30 |
| 5 | 1.4 | Update Gantt to actual progress (V2) |  | 1h | 2026-11-04 18:30 A | 2026-11-04 19:30 A | 4, 43 | 100% | start no earlier than 2026-11-04 18:30 |
| 6 | 1.5 | PERT time estimates |  | 0.5h | 2026-11-04 19:30 A | 2026-11-04 20:00 A | 5 | 100% | start no earlier than 2026-11-04 19:30 |
| 7 | 1.6 | Finalise Gantt V3 and PERT, save to QMS |  | 0.5h | 2026-11-05 09:00 | 2026-11-05 09:30 | 6 |  | start no earlier than 2026-11-05 09:00 |
| 8 | 1.7 | Time plan final | milestone | 0h | 2026-11-05 09:30 | 2026-11-05 09:30 | 7 |  | start no earlier than 2026-11-05 09:30 |
| 9 | 1.8 | Write up time-related risks |  | 0.5h | 2026-11-05 09:30 | 2026-11-05 10:00 | 7 |  | start no earlier than 2026-11-05 09:30 |
| 10 | 2 | **WP2 Team leadership** |  | 38h | 2026-11-02 11:00 | 2026-11-05 13:00 |  |  |  |
| 11 | 2.1 | Kick-off: charter, goals, roles |  | 1.5h | 2026-11-02 11:00 A | 2026-11-02 12:30 A |  | 100% | start no earlier than 2026-11-02 11:00 |
| 12 | 2.2 | Team process write-up |  | 2h | 2026-11-02 13:00 A | 2026-11-02 15:00 A | 11 | 100% | start no earlier than 2026-11-02 13:00 |
| 13 | 2.3 | Skills matrix and task allocation |  | 0.5h | 2026-11-03 11:00 A | 2026-11-03 11:30 A | 11 | 100% | start no earlier than 2026-11-03 11:00 |
| 14 | 2.4 | Charter and skills matrix agreed | milestone | 0h | 2026-11-03 11:30 A | 2026-11-03 11:30 A | 13 | 100% | start no earlier than 2026-11-03 11:30 |
| 15 | 2.5 | Team meeting (Tue) |  | 2h | 2026-11-03 11:00 A | 2026-11-03 13:00 A |  | 100% | start no earlier than 2026-11-03 11:00 |
| 16 | 2.6 | Team meeting (Wed) |  | 2h | 2026-11-04 11:00 A | 2026-11-04 13:00 A |  | 100% | start no earlier than 2026-11-04 11:00 |
| 17 | 2.7 | Team meeting (Thu): sign off slides |  | 2h | 2026-11-05 11:00 | 2026-11-05 13:00 |  |  | start no earlier than 2026-11-05 11:00 |
| 18 | 2.8 | Add proficiency scores to skills matrix |  | 0.5h | 2026-11-05 11:00 | 2026-11-05 11:30 | 13 |  | start no earlier than 2026-11-05 11:00 |
| 19 | 3 | **WP3 Quality management** |  | 39h | 2026-11-02 13:00 | 2026-11-05 16:00 |  |  |  |
| 20 | 3.1 | Set up QMS folder tree |  | 1h | 2026-11-02 13:00 A | 2026-11-02 14:00 A | 11 | 100% | start no earlier than 2026-11-02 13:00 |
| 21 | 3.2 | Naming procedure and file list |  | 1h | 2026-11-03 11:00 A | 2026-11-03 12:00 A | 20 | 100% | start no earlier than 2026-11-03 11:00 |
| 22 | 3.3 | D&D matrix up to verification |  | 16h | 2026-11-03 14:00 | 2026-11-04 18:00 | 21 | 80% | start no earlier than 2026-11-03 14:00 |
| 23 | 3.4 | Finish D&D rows N4, N6, N7 |  | 0.5h | 2026-11-05 09:00 | 2026-11-05 09:30 | 22 |  | start no earlier than 2026-11-05 09:00 |
| 24 | 3.5 | Update QMS file list for audit |  | 0.5h | 2026-11-05 09:30 | 2026-11-05 10:00 | 23, 7 |  | start no earlier than 2026-11-05 09:30 |
| 25 | 3.6 | Buffer: audit check |  | 0.5h | 2026-11-05 10:00 | 2026-11-05 10:30 | 24 |  | start no earlier than 2026-11-05 10:00 |
| 26 | 3.7 | QMS audit (group 32, 10:30) | milestone | 0h | 2026-11-05 10:30 | 2026-11-05 10:30 | 25 |  | must start on 2026-11-05 10:30 |
| 27 | 3.8 | GitHub: branch, change and merge |  | 0.5h | 2026-11-05 10:00 | 2026-11-05 10:30 | 7 |  | start no earlier than 2026-11-05 10:00 |
| 28 | 3.9 | Final QMS update (videos, new versions) |  | 0.5h | 2026-11-05 15:30 | 2026-11-05 16:00 | 26, 66 |  | start no earlier than 2026-11-05 15:30 |

| ID | WBS | Task | Type | Duration | Start | Finish | Predecessors | Complete | Constraint |
| --- | --- | --- | --- | --- | --- | --- | --- | --- | --- |
| 29 | 4 | **WP4 EMG recording** |  | 13.5h | 2026-11-02 13:00 | 2026-11-03 14:30 |  |  |  |
| 30 | 4.1 | Research electrode placement |  | 1h | 2026-11-02 13:00 A | 2026-11-02 14:00 A | 11 | 100% | start no earlier than 2026-11-02 13:00 |
| 31 | 4.2 | Risk assessment, book shared kit |  | 1h | 2026-11-02 13:00 A | 2026-11-02 14:00 A | 11 | 100% | start no earlier than 2026-11-02 13:00 |
| 32 | 4.3 | Arduino sampling code |  | 2h | 2026-11-03 09:00 A | 2026-11-03 11:00 A | 30 | 100% | start no earlier than 2026-11-03 09:00 |
| 33 | 4.4 | Collect shared EMG kit | milestone | 0h | 2026-11-03 12:05 A | 2026-11-03 12:05 A | 31 | 100% | must start on 2026-11-03 12:05 |
| 34 | 4.5 | Set up kit, pre-recording checks |  | 0.92h | 2026-11-03 12:05 A | 2026-11-03 13:00 A | 33, 32 | 100% | start no earlier than 2026-11-03 12:05 |
| 35 | 4.6 | Record 9 movements |  | 1h | 2026-11-03 13:00 A | 2026-11-03 14:00 A | 34 | 100% | start no earlier than 2026-11-03 13:00 |
| 36 | 4.7 | Measurements done (Goal 1) | milestone | 0h | 2026-11-03 14:00 A | 2026-11-03 14:00 A | 35 | 100% | start no earlier than 2026-11-03 14:00 |
| 37 | 4.8 | Hand kit to partner team |  | 0.5h | 2026-11-03 14:00 A | 2026-11-03 14:30 A | 35 | 100% | start no earlier than 2026-11-03 14:00 |
| 38 | 5 | **WP5 Signal processing** |  | 27h | 2026-11-02 13:00 | 2026-11-04 16:00 |  |  |  |
| 39 | 5.1 | MATLAB import and plot script |  | 4h | 2026-11-02 13:00 A | 2026-11-02 17:00 A | 11 | 100% | start no earlier than 2026-11-02 13:00 |
| 40 | 5.2 | Filter noise (Goal 2) |  | 3h | 2026-11-03 14:00 A | 2026-11-03 17:00 A | 36, 39 | 100% | start no earlier than 2026-11-03 14:00 |
| 41 | 5.3 | Verify recorded data |  | 1h | 2026-11-03 17:00 A | 2026-11-03 18:00 A | 40 | 100% | start no earlier than 2026-11-03 17:00 |
| 42 | 5.4 | Condition signals (Goal 3) |  | 2h | 2026-11-04 09:00 A | 2026-11-04 11:00 A | 40 | 100% | start no earlier than 2026-11-04 09:00 |
| 43 | 5.5 | Map signals to movements (Goal 3) |  | 3h | 2026-11-04 13:00 A | 2026-11-04 16:00 A | 42 | 100% | start no earlier than 2026-11-04 13:00 |
| 44 | 5.6 | Analysis complete (Goal 3) | milestone | 0h | 2026-11-04 16:00 A | 2026-11-04 16:00 A | 43, 41 | 100% | start no earlier than 2026-11-04 16:00 |
| 45 | 6 | **WP6 NinaPro comparison** |  | 26h | 2026-11-02 14:00 | 2026-11-04 16:00 |  |  |  |
| 46 | 6.1 | Prepare NinaPro dataset |  | 3h | 2026-11-02 14:00 A | 2026-11-02 17:00 A | 31 | 100% | start no earlier than 2026-11-02 14:00 |
| 47 | 6.2 | Compare with NinaPro (Goal 4) |  | 3h | 2026-11-04 13:00 | 2026-11-04 16:00 | 42, 46 | 75% | start no earlier than 2026-11-04 13:00 |
| 48 | 6.3 | Comparison complete (Goal 4) | milestone | 0h | 2026-11-04 16:00 | 2026-11-04 16:00 | 47 |  | start no earlier than 2026-11-04 16:00 |
| 49 | 7 | **WP7 Presentation and videos** |  | 40.5h | 2026-11-02 12:30 | 2026-11-05 17:00 |  |  |  |
| 50 | 7.1 | Draft PM document |  | 16h | 2026-11-02 12:30 A | 2026-11-03 16:30 A | 11 | 100% | start no earlier than 2026-11-02 12:30 |
| 51 | 7.2 | Draft slides |  | 1.5h | 2026-11-02 17:30 A | 2026-11-02 19:00 A | 39 | 100% | start no earlier than 2026-11-02 17:30 |
| 52 | 7.3 | Add analysis results to slides |  | 1.25h | 2026-11-04 16:00 A | 2026-11-04 17:15 A | 44, 48, 51 | 100% | start no earlier than 2026-11-04 16:00 |
| 53 | 7.4 | Complete PM document |  | 2h | 2026-11-05 09:00 | 2026-11-05 11:00 | 50 |  | start no earlier than 2026-11-05 09:00 |
| 54 | 7.5 | Finalise slides (max 5) |  | 1h | 2026-11-05 09:00 | 2026-11-05 10:00 | 52 |  | start no earlier than 2026-11-05 09:00 |
| 55 | 7.6 | Record individual videos (max 3 min) |  | 1.25h | 2026-11-05 13:00 | 2026-11-05 14:15 | 54, 17 |  | start no earlier than 2026-11-05 13:00 |
| 56 | 7.7 | Check video lengths |  | 0.5h | 2026-11-05 14:15 | 2026-11-05 14:45 | 55 |  | start no earlier than 2026-11-05 14:15 |
| 57 | 7.8 | Buffer: video re-takes |  | 0.75h | 2026-11-05 14:45 | 2026-11-05 15:30 | 56 |  | start no earlier than 2026-11-05 14:45 |
| 58 | 7.9 | Upload videos to Moodle |  | 0.5h | 2026-11-05 15:30 | 2026-11-05 16:00 | 57 |  | start no earlier than 2026-11-05 15:30 |
| 59 | 7.10 | Final review of evidence |  | 0.5h | 2026-11-05 16:00 | 2026-11-05 16:30 | 58, 28, 18, 53 |  | start no earlier than 2026-11-05 16:00 |
| 60 | 7.11 | Project buffer |  | 0.5h | 2026-11-05 16:30 | 2026-11-05 17:00 | 59 |  | start no earlier than 2026-11-05 16:30 |
| 61 | 7.12 | Video deadline, project complete | milestone | 0h | 2026-11-05 17:00 | 2026-11-05 17:00 | 60 |  | must start on 2026-11-05 17:00 |

| ID | WBS | Task | Type | Duration | Start | Finish | Predecessors | Complete | Constraint |
| --- | --- | --- | --- | --- | --- | --- | --- | --- | --- |
| 62 | 8 | **WP8 Sustainability** |  | 16h | 2026-11-04 11:30 | 2026-11-05 15:30 |  |  |  |
| 63 | 8.1 | Sustainability ideas (4Rs, LCA, value) |  | 1h | 2026-11-04 11:30 A | 2026-11-04 12:30 A | 11 | 100% | start no earlier than 2026-11-04 11:30 |
| 64 | 8.2 | CO2 values per life-cycle stage |  | 1h | 2026-11-05 10:00 | 2026-11-05 11:00 | 63, 23 |  | start no earlier than 2026-11-05 10:00 |
| 65 | 8.3 | Individual sustainability answers |  | 0.75h | 2026-11-05 14:45 | 2026-11-05 15:30 | 64 |  | start no earlier than 2026-11-05 14:45 |
| 66 | 8.4 | Sustainability section done | milestone | 0h | 2026-11-05 15:30 | 2026-11-05 15:30 | 65 |  | start no earlier than 2026-11-05 15:30 |
